Schedule from MS Project, 2019-04-02 to 2019-07-01, costs in ¥, A marks actual dates.
Microsoft

## Calendars

- 标准: Mon-Fri 08:00-12:00, 13:00-17:00; Sat-Sun off.

## Resources

| Resource | Rate |
| --- | --- |
| 项目经理 | 50 |
| UI专家 | 40 |
| 需求专家 | 40 |
| 设计专家 | 40 |
| 质量专家 | 40 |
| 测试员1 | 35 |
| 程序员1 | 35 |
| 程序员2 | 35 |
| 程序员3 | 35 |
| 程序员4 | 35 |

## Schedule

| ID | WBS | Task | Duration | Start | Finish | Predecessors | Complete | Remaining | Total slack | Free slack | Constraint | Resources | Work | Actual work | Cost | Actual cost |
| --- | --- | --- | --- | --- | --- | --- | --- | --- | --- | --- | --- | --- | --- | --- | --- | --- |
| 1 | 1 | **启动** | 5d | 2019-04-02 A | 2019-04-09 |  | 78% | 1.12d |  |  |  |  | 80h | 38h | 3,600 | 1,830 |
| 2 | 1.1 | 组建核心团队 | 1d? | 2019-04-02 | 2019-04-03 |  |  |  | 4d |  |  | 项目经理; UI专家; 设计专家; 需求专家; 质量专家 | 40h |  | 1,680 |  |
| 3 | 1.2 | 干系人分析 | 1d | 2019-04-02 A | 2019-04-02 A |  | 100% |  |  |  |  | 项目经理 | 8h | 8h | 400 | 400 |
| 4 | 1.3 | 里程碑计划 | 1d | 2019-04-02 A | 2019-04-03 A |  | 100% |  |  |  |  | 项目经理 | 8h | 8h | 400 | 400 |
| 5 | 1.4 | 制定项目章程 | 1d | 2019-04-03 A | 2019-04-04 A | 2, 3, 4 | 100% |  |  |  |  | 项目经理 | 8h | 8h | 400 | 400 |
| 6 | 1.5 | 项目启动大会 | 1d | 2019-04-05 A | 2019-04-08 | 5 | 88% | 0.12d | 1d | 0d | finish no earlier than 2019-04-05 | 项目经理; 需求专家; UI专家; 设计专家; 质量专家 | 16h | 14h | 720 | 630 |
| 7 | 2 | **规划** | 28d | 2019-04-08 | 2019-05-16 |  |  |  |  |  |  |  | 408h |  | 18,640 |  |
| 8 | 2.1 | **规划范围** | 16d | 2019-04-08 | 2019-04-30 |  |  |  |  |  |  |  | 168h |  | 7,200 |  |
| 9 | 2.1.1 | 制定需求说明书 | 5d | 2019-04-08 | 2019-04-15 | 6 |  |  | 1d | 0d |  | 需求专家 | 40h |  | 1,600 |  |
| 10 | 2.1.2 | 界面设计 | 5d | 2019-04-15 | 2019-04-22 | 9 |  |  | 1d | 0d |  | UI专家 | 40h |  | 1,600 |  |
| 11 | 2.1.3 | 详细设计说明书 | 5d | 2019-04-15 | 2019-04-22 | 9 |  |  | 1d | 0d |  | 设计专家 | 40h |  | 1,600 |  |
| 12 | 2.1.4 | 范围说明书 | 3d | 2019-04-15 | 2019-04-18 | 9 |  |  | 3d | 2d |  | 项目经理 | 24h |  | 1,200 |  |
| 13 | 2.1.5 | 创建WBS | 2d | 2019-04-22 | 2019-04-24 | 10, 11, 12 |  |  | 1d | 0d |  | 项目经理 | 16h |  | 800 |  |
| 14 | 2.1.6 | 形成范围基准 | 1d? | 2019-04-24 | 2019-04-25 | 13 |  |  | 1d | 0d |  | 项目经理 | 8h |  | 400 |  |
| 15 | 2.2 | **规划时间** | 7d? | 2019-04-25 | 2019-05-06 |  |  |  | 1d |  |  |  | 48h |  | 2,400 |  |
| 16 | 2.2.1 | 排列工作包顺序 | 1d? | 2019-04-25 | 2019-04-26 | 14 |  |  | 1d | 0d |  |  |  |  |  |  |
| 17 | 2.2.2 | 估算资源 | 2d | 2019-04-26 | 2019-04-30 | 16 |  |  | 1d | 0d |  | 项目经理 | 16h |  | 800 |  |
| 18 | 2.2.3 | 估算持续时间 | 2d | 2019-04-30 | 2019-05-02 | 17 |  |  | 1d | 0d |  | 项目经理 | 16h |  | 800 |  |
| 19 | 2.2.4 | 制定进度计划 | 1d | 2019-05-02 | 2019-05-03 | 18 |  |  | 1d | 0d |  | 项目经理 | 8h |  | 400 |  |
| 20 | 2.2.5 | 形成进度基准 | 1d? | 2019-05-03 | 2019-05-06 | 19 |  |  | 1d | 0d |  | 项目经理 | 8h |  | 400 |  |
| 21 | 2.3 | **规划成本** | 3d? | 2019-05-06 | 2019-05-09 |  |  |  | 1d | 0d |  |  | 24h |  | 1,200 |  |
| 22 | 2.3.1 | 项目成本估算 | 1d | 2019-05-06 | 2019-05-07 | 20 |  |  | 1d | 0d |  | 项目经理 | 8h |  | 400 |  |
| 23 | 2.3.2 | 项目预算 | 1d | 2019-05-07 | 2019-05-08 | 22 |  |  | 1d | 0d |  | 项目经理 | 8h |  | 400 |  |
| 24 | 2.3.3 | 形成范围基准 | 1d? | 2019-05-08 | 2019-05-09 | 23 |  |  | 1d |  |  | 项目经理 | 8h |  | 400 |  |

| ID | WBS | Task | Duration | Start | Finish | Predecessors | Total slack | Free slack | Resources | Work | Cost |
| --- | --- | --- | --- | --- | --- | --- | --- | --- | --- | --- | --- |
| 25 | 2.4 | **规划质量** | 7d | 2019-04-25 | 2019-05-06 |  | 4d | 3d |  | 56h | 2,240 |
| 26 | 2.4.1 | 制定测试计划 | 2d | 2019-04-25 | 2019-04-29 | 14 | 4d | 0d | 质量专家 | 16h | 640 |
| 27 | 2.4.2 | 制定测试用例 | 5d | 2019-04-29 | 2019-05-06 | 26 | 4d |  | 质量专家 | 40h | 1,600 |
| 28 | 2.5 | **规划人力资源** | 2d | 2019-04-30 | 2019-05-02 |  | 6d | 5d |  | 16h | 800 |
| 29 | 2.5.1 | 制定人力资源计划 | 1d | 2019-04-30 | 2019-05-01 | 17 | 6d | 0d | 项目经理 | 8h | 400 |
| 30 | 2.5.2 | 制定人员配备管理计划 | 1d | 2019-05-01 | 2019-05-02 | 29 | 6d |  | 项目经理 | 8h | 400 |
| 31 | 2.6 | **规划沟通** | 2d | 2019-05-01 | 2019-05-03 |  | 9d |  |  | 16h | 800 |
| 32 | 2.6.1 | 制定沟通管理计划 | 2d | 2019-05-01 | 2019-05-03 | 29 | 9d |  | 项目经理 | 16h | 800 |
| 33 | 2.7 | **规划采购** | 6d | 2019-04-30 | 2019-05-08 |  | 6d |  |  | 48h | 2,400 |
| 34 | 2.7.1 | 自制外购分析 | 2d | 2019-04-30 | 2019-05-02 | 17 | 6d | 0d | 项目经理 | 16h | 800 |
| 35 | 2.7.2 | 制定采购计划 | 4d | 2019-05-02 | 2019-05-08 | 34 | 6d |  | 项目经理 | 32h | 1,600 |
| 36 | 2.8 | **规划风险** | 4d | 2019-05-09 | 2019-05-15 |  | 1d |  |  | 32h | 1,600 |
| 37 | 2.8.1 | 识别风险 | 1d | 2019-05-09 | 2019-05-10 | 15, 21, 25, 28 | 1d | 0d | 项目经理 | 8h | 400 |
| 38 | 2.8.2 | 风险分析 | 1d | 2019-05-10 | 2019-05-13 | 37 | 1d | 0d | 项目经理 | 8h | 400 |
| 39 | 2.8.3 | 制定风险登记册 | 1d | 2019-05-13 | 2019-05-14 | 38 | 1d | 0d | 项目经理 | 8h | 400 |
| 40 | 2.8.4 | 规划整合 | 1d | 2019-05-14 | 2019-05-15 | 39 | 1d |  | 项目经理 | 8h | 400 |
| 41 | 3 | **执行与监控** | 31d | 2019-05-16 | 2019-06-28 |  | 1d |  |  | 752h | 28,360 |
| 42 | 3.1 | 组建项目团队 | 3d | 2019-05-16 | 2019-05-21 | 7 | 4d | 0d | 测试员1; 程序员1; 程序员2; 程序员3; 项目经理; 程序员4 | 144h | 5,400 |
| 43 | 3.2 | **项目执行** | 27d | 2019-05-21 | 2019-06-27 |  |  |  |  | 280h | 9,800 |
| 44 | 3.2.1 | **用户模块** | 9d | 2019-05-21 | 2019-06-03 |  | 18d |  |  | 72h | 2,520 |
| 45 | 3.2.1.1 | 注册登录 | 3d | 2019-05-21 | 2019-05-24 | 42 | 18d | 0d | 程序员1 | 24h | 840 |
| 46 | 3.2.1.2 | 个人信息 | 3d | 2019-05-24 | 2019-05-29 | 45 | 18d | 0d | 程序员1 | 24h | 840 |
| 47 | 3.2.1.3 | 个人配置 | 3d | 2019-05-29 | 2019-06-03 | 46 | 18d |  | 程序员1 | 24h | 840 |
| 48 | 3.2.2 | **查询模块** | 9d | 2019-05-21 | 2019-06-03 |  | 18d |  |  | 72h | 2,520 |
| 49 | 3.2.2.1 | 高校信息查询 | 3d | 2019-05-21 | 2019-05-24 | 42 | 18d | 0d | 程序员2 | 24h | 840 |
| 50 | 3.2.2.2 | 专业信息查询 | 3d | 2019-05-24 | 2019-05-29 | 49 | 18d | 0d | 程序员2 | 24h | 840 |
| 51 | 3.2.2.3 | 模拟报考查询 | 3d | 2019-05-29 | 2019-06-03 | 50 | 18d |  | 程序员2 | 24h | 840 |

| ID | WBS | Task | Duration | Start | Finish | Predecessors | Total slack | Free slack | Resources | Work | Cost |
| --- | --- | --- | --- | --- | --- | --- | --- | --- | --- | --- | --- |
| 52 | 3.2.3 | **高校模块** | 9d | 2019-05-21 | 2019-06-03 |  | 18d |  |  | 72h | 2,520 |
| 53 | 3.2.3.1 | 高校特色 | 3d | 2019-05-21 | 2019-05-24 | 42 | 18d | 0d | 程序员3 | 24h | 840 |
| 54 | 3.2.3.2 | 高校专业 | 3d | 2019-05-24 | 2019-05-29 | 53 | 18d | 0d | 程序员3 | 24h | 840 |
| 55 | 3.2.3.3 | 专业招生 | 3d | 2019-05-29 | 2019-06-03 | 54 | 18d |  | 程序员3 | 24h | 840 |
| 56 | 3.2.4 | **专家模块** | 8d | 2019-05-21 | 2019-05-31 |  | 19d |  |  | 64h | 2,240 |
| 57 | 3.2.4.1 | 专家介绍 | 3d | 2019-05-21 | 2019-05-24 | 42 | 19d | 0d | 程序员4 | 24h | 840 |
| 58 | 3.2.4.2 | 在线咨询 | 3d | 2019-05-24 | 2019-05-29 | 57 | 19d | 0d | 程序员4 | 24h | 840 |
| 59 | 3.2.4.3 | 付费咨询 | 2d | 2019-05-29 | 2019-05-31 | 58 | 19d |  | 程序员4 | 16h | 560 |
| 60 | 3.3 | **项目监控** | 4d | 2019-05-21 | 2019-05-27 |  | 25d |  |  | 96h | 3,960 |
| 61 | 3.3.1 | 各项指标监控 | 1d | 2019-05-21 | 2019-05-22 | 42 | 25d | 0d | 测试员1; 项目经理 | 16h | 680 |
| 62 | 3.3.2 | 监控评审 | 1d | 2019-05-22 | 2019-05-23 | 61 | 25d | 0d | 设计专家; 项目经理 | 16h | 720 |
| 63 | 3.3.3 | 变更评审 | 1d | 2019-05-23 | 2019-05-24 | 62 | 25d | 0d | 设计专家; 项目经理 | 16h | 720 |
| 64 | 3.3.4 | 例会 | 1d | 2019-05-24 | 2019-05-27 | 63 | 25d |  | UI专家; 测试员1; 程序员1; 程序员2; 程序员3; 项目经理 | 48h | 1,840 |
| 65 | 3.4 | **管理干系人** | 1d | 2019-05-21 | 2019-05-22 |  | 28d |  |  | 24h | 1,200 |
| 66 | 3.4.1 | 发布项目信息 | 1d | 2019-05-21 | 2019-05-22 | 42 | 28d |  | 项目经理 | 8h | 400 |
| 67 | 3.4.2 | 报告监控指标 | 1d | 2019-05-21 | 2019-05-22 | 42 | 28d |  | 项目经理 | 8h | 400 |
| 68 | 3.4.3 | 干系人沟通 | 1d | 2019-05-21 | 2019-05-22 | 42 | 28d |  | 项目经理 | 8h | 400 |
| 69 | 3.5 | **团队建设** | 10d | 2019-05-21 | 2019-06-04 |  |  |  |  | 208h | 8,000 |
| 70 | 3.5.1 | 培训 | 1d? | 2019-05-21 | 2019-05-22 | 42 | 9d |  | 测试员1; 程序员1; 程序员2; 程序员3; 程序员4 | 40h | 1,400 |
| 71 | 3.5.2 | 娱乐活动 | 1d? | 2019-05-21 | 2019-05-22 | 42 | 9d |  | 测试员1; 程序员1; 程序员2; 程序员3; 程序员4 | 40h | 1,400 |
| 72 | 3.5.3 | 沟通 | 1d? | 2019-05-21 | 2019-05-22 | 42 | 9d |  | 测试员1; 程序员1; 程序员2; 程序员3; 程序员4 | 40h | 1,400 |
| 73 | 3.5.4 | 采购 | 6d | 2019-05-21 | 2019-05-29 | 42 | 4d |  | 项目经理 | 48h | 2,400 |
| 74 | 3.5.5 | 项目验收 | 1d? | 2019-06-27 | 2019-06-28 | 43 | -18d | 0d | 测试员1; 程序员1; 程序员2; 程序员3; 程序员4 | 40h | 1,400 |
| 75 | 4 | **收尾** | 1d? | 2019-06-28 | 2019-07-01 |  | 0d |  |  | 72h | 3,080 |
| 76 | 4.1 | 项目终验 | 1d? | 2019-06-28 | 2019-07-01 | 74 | 0d |  | UI专家; 设计专家; 项目经理; 需求专家; 质量专家 | 40h | 1,680 |
| 77 | 4.2 | 结束终验 | 1d? | 2019-06-28 | 2019-07-01 | 74 | 0d |  | 项目经理 | 8h | 400 |
| 78 | 4.3 | 结束采购 | 1d? | 2019-06-28 | 2019-07-01 | 74 | 0d |  | 项目经理 | 8h | 400 |
| 79 | 4.4 | 项目内部收尾 | 1d? | 2019-06-28 | 2019-07-01 | 74 | 0d |  | UI专家; 测试员1 | 16h | 600 |
